How a schedule from MS Project changed from version to version. A marks actual dates.

## Version 1 (saved 2020-11-30, file WBS.mpp)

| ID | WBS | Task | Duration | Start | Finish | Complete |
| --- | --- | --- | --- | --- | --- | --- |
| 1 |  | 完善Selenium框架 | 1d | 2020-11-10 | 2020-11-10 |  |
| 2 | 2 | **美化测试报告** | 4d | 2020-11-11 A | 2020-11-16 A | 100% |
| 3 | 2.1 | **Freemarker** | 4d | 2020-11-11 A | 2020-11-15 A | 100% |
| 4 |  | Freemarker+TestNG结合 | 2d | 2020-11-11 A | 2020-11-12 A | 100% |
| 5 |  | Freemarker+Selenium+TestNG | 2d | 2020-11-13 A | 2020-11-14 A | 100% |
| 6 |  | Freemarker成功发送邮件 | 1d | 2020-11-15 A | 2020-11-15 A | 100% |
| 7 | 2.2 | **ReportNG** | 2d | 2020-11-13 A | 2020-11-15 A | 100% |
| 8 |  | ReportNG文件配置 | 1d | 2020-11-13 A | 2020-11-13 A | 100% |
| 9 |  | ReportNG成功发送邮件 | 2d | 2020-11-14 A | 2020-11-15 A | 100% |
| 10 | 2.3 | **testNG-xslt** | 4d | 2020-11-11 A | 2020-11-15 A | 100% |
| 11 |  | testNG-xslt文件配置 | 3d | 2020-11-11 A | 2020-11-13 A | 100% |
| 12 |  | testNG测试报告邮件发送 | 2d | 2020-11-13 A | 2020-11-15 A | 100% |
| 13 |  | 三种美化方法整合 | 2d | 2020-11-15 A | 2020-11-16 A | 100% |
| 14 | 3 | **手工测试** | 16d | 2020-11-09 A | 2020-11-28 A | 100% |
| 15 |  | 测试计划 | 1d | 2020-11-09 A | 2020-11-09 A | 100% |
| 16 | 3.2 | **后台** | 7d | 2020-11-11 A | 2020-11-19 A | 100% |
| 17 | 3.2.1 | **主营** | 6d | 2020-11-09 | 2020-11-15 | 100% |
| 18 | 3.2.1.1 | **楼盘房源** | 1d | 2020-11-11 A | 2020-11-11 A | 100% |
| 19 |  | 出售管理 | 1d | 2020-11-11 A | 2020-11-11 A | 100% |
| 20 |  | 出租管理 | 1d | 2020-11-11 A | 2020-11-11 A | 100% |
| 21 |  | 楼盘管理 | 1d | 2020-11-11 A | 2020-11-11 A | 100% |
| 22 |  | 户型管理 | 1d | 2020-11-11 A | 2020-11-11 A | 100% |
| 23 |  | 相册 | 1d | 2020-11-11 A | 2020-11-11 A | 100% |
| 24 |  | 房产设置 | 1d | 2020-11-11 A | 2020-11-11 A | 100% |
| 25 |  | 会员管理 | 1d | 2020-11-11 A | 2020-11-11 A | 100% |
| 26 | 3.2.2 | **资讯** | 3d | 2020-11-16 A | 2020-11-18 A | 100% |
| 27 |  | 新闻介绍 | 1d | 2020-11-16 A | 2020-11-16 A | 100% |
| 28 |  | 专题新闻 | 1d | 2020-11-18 A | 2020-11-18 A | 100% |
| 29 | 3.2.3 | **互动** | 3d | 2020-11-16 A | 2020-11-18 A | 100% |
| 30 |  | 问答系统 | 1d | 2020-11-16 A | 2020-11-16 A | 100% |
| 31 |  | 其它互动 | 1d | 2020-11-18 A | 2020-11-18 A | 100% |
| 32 | 3.2.4 | **广告** | 3d | 2020-11-16 A | 2020-11-18 A | 100% |
| 33 |  | 文字连接 | 1d | 2020-11-16 A | 2020-11-16 A | 100% |
| 34 |  | 图片连接 | 1d | 2020-11-18 A | 2020-11-18 A | 100% |
| 35 |  | 文本块 | 1d | 2020-11-16 A | 2020-11-16 A | 100% |
| 36 |  | 手动推送 | 1d | 2020-11-18 A | 2020-11-18 A | 100% |
| 37 |  | 网址收藏 | 1d | 2020-11-16 A | 2020-11-16 A | 100% |
| 38 | 3.2.5 | **工具** | 3d | 2020-11-16 A | 2020-11-18 A | 100% |
| 39 |  | 系统工具 | 1d | 2020-11-16 A | 2020-11-16 A | 100% |
| 40 |  | 我的收藏 | 1d | 2020-11-18 A | 2020-11-18 A | 100% |
| 41 | 3.2.6 | **架设** | 4d | 2020-11-16 A | 2020-11-19 A | 100% |
| 42 |  | 超管架构 | 2d | 2020-11-16 A | 2020-11-17 A | 100% |
| 43 |  | 超管工具 | 2d | 2020-11-18 A | 2020-11-19 A | 100% |
| 44 | 3.3 | **前台** | 3d | 2020-11-19 A | 2020-11-22 A | 100% |
| 45 | 3.3.1 | **楼盘** | 3d | 2020-11-19 A | 2020-11-22 A | 100% |
| 46 |  | 楼盘检索+楼盘内页 | 3d | 2020-11-19 A | 2020-11-22 A | 100% |
| 47 |  | 内页互动 | 3d | 2020-11-19 A | 2020-11-22 A | 100% |
| 48 | 3.3.2 | **二手房** | 3d | 2020-11-19 A | 2020-11-22 A | 100% |
| 49 |  | 检索页+出租内页 | 3d | 2020-11-19 A | 2020-11-22 A | 100% |
| 50 |  | 内页互动 | 1d | 2020-11-19 A | 2020-11-19 A | 100% |
| 51 | 3.3.3 | **出租房** | 3d | 2020-11-19 A | 2020-11-22 A | 100% |
| 52 |  | 检索+出租内页 | 3d | 2020-11-19 A | 2020-11-22 A | 100% |
| 53 |  | 内页互动 | 3d | 2020-11-19 A | 2020-11-22 A | 100% |
| 54 | 3.3.4 | **辅助模块** | 3d | 2020-11-19 A | 2020-11-22 A | 100% |
| 55 |  | 基础模块 | 2d | 2020-11-19 A | 2020-11-20 A | 100% |
| 56 |  | 广告/友情链接 | 1d | 2020-11-21 A | 2020-11-21 A | 100% |
| 57 |  | 会员 | 1d | 2020-11-22 A | 2020-11-22 A | 100% |
| 58 |  | 执行测试用例 | 2d | 2020-11-23 A | 2020-11-24 A | 100% |
| 59 |  | 测试报告 | 4d | 2020-11-25 A | 2020-11-28 A | 100% |
| 60 | 4 | **自动化测试** | 16d | 2020-11-16 | 2020-12-06 | 71% |
| 61 | 4.1 | **后台** | 11d | 2020-11-16 A | 2020-11-30 A | 100% |
| 62 | 4.1.1 | **主营** | 11d | 2020-11-09 | 2020-11-22 A | 100% |
| 63 | 4.1.1.1 | **楼盘房源** | 3d | 2020-11-16 A | 2020-11-18 A | 100% |
| 64 |  | 出售管理 | 3d | 2020-11-16 A | 2020-11-18 A | 100% |
| 65 |  | 出租管理 | 3d | 2020-11-16 A | 2020-11-18 A | 100% |
| 66 |  | 楼盘管理 | 3d | 2020-11-16 A | 2020-11-18 A | 100% |
| 67 |  | 户型管理 | 3d | 2020-11-16 A | 2020-11-18 A | 100% |
| 68 |  | 相册 | 3d | 2020-11-16 A | 2020-11-18 A | 100% |
| 69 |  | 房产设置 | 3d | 2020-11-16 A | 2020-11-18 A | 100% |
| 70 | 4.1.1.3 | **会员管理** | 6d | 2020-11-16 A | 2020-11-22 A | 100% |

| ID | WBS | Task | Duration | Start | Finish | Complete |
| --- | --- | --- | --- | --- | --- | --- |
| 71 |  | 经纪人 | 3d | 2020-11-16 A | 2020-11-18 A | 100% |
| 72 |  | 个人会员 | 3d | 2020-11-18 A | 2020-11-20 A | 100% |
| 73 |  | 企业会员 | 1d | 2020-11-22 A | 2020-11-22 A | 100% |
| 74 | 4.1.2 | **资讯** | 6d | 2020-11-23 A | 2020-11-30 A | 100% |
| 75 |  | 新闻介绍 | 3d | 2020-11-23 A | 2020-11-25 A | 100% |
| 76 |  | 专题新闻 | 3d | 2020-11-26 A | 2020-11-30 A | 100% |
| 77 | 4.1.3 | **互动** | 6d | 2020-11-19 A | 2020-11-26 A | 100% |
| 78 |  | 问答系统 | 3d | 2020-11-19 A | 2020-11-22 A | 100% |
| 79 |  | 其它互动 | 4d | 2020-11-23 A | 2020-11-26 A | 100% |
| 80 | 4.1.4 | **广告** | 7d | 2020-11-19 | 2020-11-27 | 100% |
| 81 |  | 文字连接 | 3d | 2020-11-19 A | 2020-11-22 A | 100% |
| 82 |  | 图片连接 | 4d | 2020-11-23 A | 2020-11-26 A | 100% |
| 83 |  | 文本块 | 3d | 2020-11-19 A | 2020-11-22 A | 100% |
| 84 |  | 手动推送 | 4d | 2020-11-23 A | 2020-11-26 A | 100% |
| 85 |  | 网址收藏 | 1d | 2020-11-16 A | 2020-11-16 A | 100% |
| 86 | 4.1.5 | **工具** | 5d | 2020-11-19 A | 2020-11-25 A | 100% |
| 87 |  | 系统工具 | 3d | 2020-11-19 A | 2020-11-22 A | 100% |
| 88 |  | 我的收藏 | 3d | 2020-11-23 A | 2020-11-25 A | 100% |
| 89 | 4.1.6 | **架设** | 8d | 2020-11-19 A | 2020-11-30 A | 100% |
| 90 |  | 超管架构 | 3d | 2020-11-19 A | 2020-11-23 A | 100% |
| 91 |  | 超管工具 | 4d | 2020-11-25 A | 2020-11-30 A | 100% |
| 92 | 4.2 | **前台** | 5d | 2020-11-29 | 2020-12-03 |  |
| 93 | 4.2.1 | **楼盘** | 4d | 2020-11-30 | 2020-12-03 |  |
| 94 |  | 楼盘检索+楼盘内页 | 3d | 2020-12-01 | 2020-12-03 |  |
| 95 |  | 内页互动 | 5d | 2020-11-29 | 2020-12-03 |  |
| 96 | 4.2.2 | **二手房** | 5d | 2020-11-29 | 2020-12-03 |  |
| 97 |  | 检索页+出租内页 | 4d | 2020-11-30 | 2020-12-03 |  |
| 98 |  | 内页互动 | 4d | 2020-11-30 | 2020-12-03 |  |
| 99 | 4.2.3 | **出租房** | 5d | 2020-11-29 | 2020-12-03 |  |
| 100 |  | 检索+出租内页 | 4d | 2020-11-30 | 2020-12-03 |  |
| 101 |  | 内页互动 | 4d | 2020-11-30 | 2020-12-03 |  |
| 102 | 4.2.4 | **辅助模块** | 4d | 2020-11-30 | 2020-12-03 |  |
| 103 |  | 基础模块 | 1d | 2020-11-30 | 2020-11-30 |  |
| 104 |  | 广告/友情链接 | 1d | 2020-12-02 | 2020-12-02 |  |
| 105 |  | 会员 | 1d | 2020-12-03 | 2020-12-03 |  |
| 106 | 5 | **jenkins持续性集成** | 7d | 2020-11-28 A | 2020-12-06 | 29% |
| 107 |  | jenkins环境搭建 | 2d | 2020-11-28 A | 2020-11-30 A | 100% |
| 108 |  | jenkins集成 | 5d | 2020-12-01 | 2020-12-06 |  |

## Version 2 (saved 2020-12-01, file WBS.mpp)

Last finish stays 2020-12-06.

Changed:

| ID | Task | Start | Finish | Duration | Complete |
| --- | --- | --- | --- | --- | --- |
| 60 | **自动化测试** |  |  |  | 71% → 76% |
| 93 | **楼盘** | 2020-11-30 → 2020-12-01 (+1d) | 2020-12-03 → 2020-12-02 (-1d) | 4d → 2d |  |
| 94 | 楼盘检索+楼盘内页 |  | 2020-12-03 → 2020-12-02 (-1d) | 3d → 2d |  |
| 95 | 内页互动 |  | 2020-12-03 → 2020-11-30 (-3d) | 5d → 2d |  |
| 96 | **二手房** |  | 2020-12-03 → 2020-12-02 (-1d) | 5d → 4d |  |
| 97 | 检索页+出租内页 |  | 2020-12-03 → 2020-12-02 (-1d) | 4d → 3d |  |
| 98 | 内页互动 |  | 2020-12-03 → 2020-12-02 (-1d) | 4d → 3d |  |
| 106 | **jenkins持续性集成** |  |  |  | 29% → 40% |
| 108 | jenkins集成 | 2020-12-01 → 2020-12-03 (+2d) |  | 5d → 3d |  |

## Version 3 (saved 2020-12-09, file 规划.mpp)

Last finish stays 2020-12-06. Complete tasks 63 → 72.

Changed:

| ID | Task | Start | Finish | Duration | Complete | Other |
| --- | --- | --- | --- | --- | --- | --- |
| 1 | 完善Selenium框架 |  |  |  |  | resources 杜佳玉 → 杜佳玉; 储备 [0.1%] |
| 2 | **美化测试报告** |  | 2020-11-16 A → 2020-11-21 (+5d) | 4d → 9d | 100% → 99% | resources none → 储备 [0.1%] |
| 3 | **Freemarker** |  | 2020-11-15 A → 2020-11-15 |  | 100% → 99% | resources 杜佳玉; 郭梦瑶; 焦嘉琦; 孙宇菲 → 间接成本 [0.1%] |
| 7 | **ReportNG** |  | 2020-11-15 A → 2020-11-15 |  | 100% → 99% | resources 于霄臻 → 间接成本 [0.1%] |
| 8 | ReportNG文件配置 |  |  |  |  | resources none → 于霄臻 |
| 9 | ReportNG成功发送邮件 |  |  |  |  | resources none → 于霄臻 |
| 10 | **testNG-xslt** |  | 2020-11-15 A → 2020-11-15 |  | 100% → 99% | resources none → 间接成本 [0.1%] |
| 14 | **手工测试** |  | 2020-11-28 A → 2020-11-28 |  | 100% → 99% | resources none → 储备 [0.1%] |
| 16 | **后台** |  | 2020-11-19 A → 2020-11-19 |  | 100% → 99% | resources none → 间接成本 [0.1%] |
| 44 | **前台** |  | 2020-11-22 A → 2020-11-22 |  | 100% → 99% | resources none → 间接成本 [0.1%] |
| 60 | **自动化测试** | 2020-11-16 A |  |  | 76% → 99% | resources none → 储备 [0.1%] |
| 61 | **后台** |  | 2020-11-30 A → 2020-11-30 |  | 100% → 99% | resources none → 间接成本 [0.1%] |
| 70 | **会员管理** |  |  |  |  | resources 杜佳玉 → none |
| 71 | 经纪人 |  |  |  |  | resources none → 杜佳玉 |
| 72 | 个人会员 |  |  |  |  | resources none → 杜佳玉 |
| 73 | 企业会员 |  |  |  |  | resources none → 杜佳玉 |
| 92 | **前台** | 2020-11-29 A |  |  | 0% → 99% | resources none → 间接成本 [0.1%] |
| 93 | **楼盘** |  | 2020-12-02 A |  | 0% → 100% |  |
| 94 | 楼盘检索+楼盘内页 | 2020-12-01 A | 2020-12-02 A |  | 0% → 100% |  |
| 95 | 内页互动 | 2020-11-29 A | 2020-11-30 A |  | 0% → 100% |  |
| 96 | **二手房** |  | 2020-12-02 A |  | 0% → 100% |  |
| 97 | 检索页+出租内页 | 2020-11-30 A | 2020-12-02 A |  | 0% → 100% |  |
| 98 | 内页互动 | 2020-11-30 A | 2020-12-02 A |  | 0% → 100% |  |
| 99 | **出租房** |  | 2020-12-03 A |  | 0% → 100% |  |
| 100 | 检索+出租内页 | 2020-11-30 A | 2020-12-03 A |  | 0% → 100% |  |
| 101 | 内页互动 | 2020-11-30 A | 2020-12-03 A |  | 0% → 100% |  |
| 102 | **辅助模块** | 2020-11-30 A | 2020-12-03 A |  | 0% → 100% |  |
| 103 | 基础模块 | 2020-11-30 A | 2020-11-30 A |  | 0% → 100% |  |
| 104 | 广告/友情链接 | 2020-12-02 A | 2020-12-02 A |  | 0% → 100% |  |
| 105 | 会员 | 2020-12-03 A | 2020-12-03 A |  | 0% → 100% |  |
| 106 | **jenkins持续性集成** |  |  |  |  | resources none → 间接成本 [0.1%]; 储备 [0.1%] |
